# TaskList

Schedule from MS Project, 2010-10-04 to 2011-01-25.
ABC

## Calendars

- Standard: Mon-Fri 08:00-12:00, 13:00-17:00; Sat-Sun off. Exceptions (off unless hours are given): 2010-10-02 to 2011-04-30 08:00-12:00, 13:00-17:00 (recurring).

## Resources

| Resource |
| --- |
| All members |
| Chính |
| Thảo |
| Long |
| Ly |
| Giang |
| Developers |
| Designers |
| Coders |

## Schedule

| ID | WBS | Task | Type | Duration | Start | Finish | Predecessors | Total slack | Free slack | Constraint | Deadline | Resources | Work |
| --- | --- | --- | --- | --- | --- | --- | --- | --- | --- | --- | --- | --- | --- |
| 1 | 1 | **A. MODULE A** |  | 114d? | 2010-10-04 | 2011-01-25 |  | -86d | 0d |  | 2010-10-31 |  | 3104h |
| 2 | 1.1 | **1. BUSINESS ANALYSIS** |  | 20d? | 2010-10-04 | 2010-10-23 |  | -74d | 0d |  |  |  | 160h |
| 3 | 1.1.1 | 1.1 Understand Habubank's Documents |  | 12d? | 2010-10-04 | 2010-10-15 |  | -66d | 0d | finish no earlier than 2010-10-15 |  | All members | 96h |
| 4 | 1.1.2 | 1.2 Understand EPI's Document |  | 8d? | 2010-10-16 | 2010-10-23 |  | -50d | 0d | finish no earlier than 2010-10-23 |  | All members | 64h |
| 5 | 1.2 | BUSINESS ANALYSIS REPORT | milestone | 0d | 2010-10-23 | 2010-10-23 |  | 9d |  | start no earlier than 2010-10-23 |  |  |  |
| 6 | 1.3 | **2. SYSTEM ANALYSIS** |  | 32d? | 2010-10-25 | 2010-11-25 | 2 | -75d | 0d |  |  |  | 824h |
| 7 | 1.3.1 | **2.1 ELICITATION** |  | 22d? | 2010-10-25 | 2010-11-15 |  | -65d | 0d |  |  |  | 824h |
| 8 | 1.3.1.1 | 2.1.0 Approach determination |  | 7d? | 2010-10-25 | 2010-10-31 |  | -50d | 0d | finish no earlier than 2010-10-31 |  | All members | 56h |
| 9 | 1.3.1.2 | 2.1.1 Account Management Module |  | 5d? | 2010-11-01 | 2010-11-05 |  | -55d | 0d | start no earlier than 2010-11-01 |  | Chính; Thảo | 80h |
| 10 | 1.3.1.3 | 2.1.2 Parameter Management Module |  | 12d? | 2010-10-25 | 2010-11-05 |  | -55d | 0d | finish no earlier than 2010-11-05 |  | Long; Ly; Giang | 288h |
| 11 | 1.3.1.4 | 2.1.3 Input Module |  | 5d? | 2010-11-06 | 2010-11-10 |  | -60d | 0d | finish no earlier than 2010-11-10 |  | Chính; Thảo | 80h |
| 12 | 1.3.1.5 | 2.1.4 Credit Ranking Module |  | 10d? | 2010-11-06 | 2010-11-15 |  | -65d | 0d | finish no earlier than 2010-11-15 |  | Long; Ly; Giang | 240h |
| 13 | 1.3.1.6 | 2.1.5 Reports Module |  | 5d? | 2010-11-11 | 2010-11-15 |  | -65d | 0d | finish no earlier than 2010-11-15 |  | Chính; Thảo | 80h |
| 14 | 1.3.2 | 2.2 ANALYSIS AND NEGOTIATION |  | 22d? | 2010-10-25 | 2010-11-15 |  | -75d | 0d | finish no earlier than 2010-11-15 |  | All members |  |
| 15 | 1.3.3 | REQUIREMENTS COLLECTION | milestone | 0d | 2010-11-15 | 2010-11-15 | 14 | -75d | 0d |  |  |  |  |
| 16 | 1.3.4 | 2.3 VALIDATION |  | 5d? | 2010-11-16 | 2010-11-20 | 15 | -51d | 0d | finish no earlier than 2010-11-20 |  |  |  |
| 17 | 1.3.5 | 2.4 DESCRIBE REQUIREMENTS |  | 5d? | 2010-11-21 | 2010-11-25 | 16 | -51d | 0d | finish no earlier than 2010-11-25 |  |  |  |
| 18 | 1.4 | SYSTEM SPECIFICATION | milestone | 0d | 2010-11-25 | 2010-11-25 |  | -44d | 0d | start no earlier than 2010-11-25 |  |  |  |
| 19 | 1.5 | **3. SYSTEM DESIGN** |  | 35d? | 2010-11-26 | 2010-12-30 | 6 | -75d | 0d |  |  |  | 960h |
| 20 | 1.5.1 | 3.1 ARCHITECTURE DESIGN |  | 13d? | 2010-11-26 | 2010-12-08 |  | -75d | 0d | finish no earlier than 2010-12-08 |  | Long; Ly; Chính | 312h |
| 21 | 1.5.2 | 3.2 ERD DESIGN |  | 7d? | 2010-12-09 | 2010-12-15 | 20 | -75d | 0d | finish no earlier than 2010-12-15 |  | Long; Ly; Chính | 168h |
| 22 | 1.5.3 | 3.3 DETAILED DESIGN |  | 15d? | 2010-12-16 | 2010-12-30 | 21 | -75d | 0d | finish no earlier than 2010-12-30 |  | Long; Ly; Chính; Giang | 480h |
| 23 | 1.6 | 4. IMPLEMENTATION |  | 15d? | 2010-12-31 | 2011-01-14 | 19 | -75d | 0d | finish no earlier than 2011-01-09 |  | Long; Ly; Chính; Giang; Thảo | 600h |
| 24 | 1.7 | **5. TESTING** |  | 61d? | 2010-11-26 | 2011-01-25 | 18 | -86d | 0d |  |  |  | 560h |
| 25 | 1.7.1 | Integration Test Design |  | 20d? | 2010-11-26 | 2010-12-15 |  | -45d | 0d | finish no earlier than 2010-12-15 |  | Giang; Thảo | 320h |
| 26 | 1.7.2 | Unit Test Design |  | 15d? | 2010-12-16 | 2010-12-30 |  | -60d | 0d | finish no earlier than 2010-12-30 |  | Designers | 120h |
| 27 | 1.7.3 | Perform Uniit Test |  | 15d? | 2010-12-31 | 2011-01-14 |  | -75d | 0d | finish no earlier than 2011-01-14 |  | Coders | 120h |
| 28 | 1.7.4 | Perform Integration Test |  | 11d? | 2011-01-15 | 2011-01-25 |  | -86d | 0d | finish no earlier than 2011-01-25 |  |  |  |
| 29 | 2 | B. MODULE B |  | 1d? | 2010-12-01 | 2010-12-01 |  | 55d |  | start no earlier than 2010-12-01 |  |  |  |
